# 中联马来园区DCOM平台

Schedule from a web Gantt chart, 2025-12-30 to 2026-01-06.
Saturdays and Sundays are off

## Schedule

| ID | WBS | Task | Type | Duration | Start | Finish | inPeople |
| --- | --- | --- | --- | --- | --- | --- | --- |
| 2 | 1 | DCOM系统合同签订 | fixed start | 6d | 2025-12-30 | 2026-01-06 | 张三 |
| 3 | 2 | DCOM系统硬件设备采购 |  | 1d | 2025-12-30 | 2025-12-30 |  |
| 4 | 3 | 马来1#楼一体化系统交付 |  | 1d | 2025-12-30 | 2025-12-30 |  |
